# ECE411_T10_Project_Schedule_v1

How a schedule from MS Project changed from version to version. A marks actual dates.

## Version 1 (saved 2014-11-10)

Note of the change: Merge pull request #17 from nicklynchjonely/master

| ID | WBS | Task | Duration | Start | Finish | Predecessors | Total float | Constraint |
| --- | --- | --- | --- | --- | --- | --- | --- | --- |
| 1 | 1 | **Get Started and Select Project** | 8d | 2014-10-01 | 2014-10-13 |  | 33d |  |
| 2 |  | Project Begins | 0d | 2014-10-01 | 2014-10-01 |  | 33d |  |
| 3 |  | 1.1 Form team | 1d | 2014-10-01 | 2014-10-01 | 2 | 33d |  |
| 4 |  | 1.2 Create team Github repository and Wiki | 1d | 2014-10-02 | 2014-10-02 | 3 | 50d |  |
| 5 |  | 1.3 Explore diverse project ideas | 3d | 2014-10-01 | 2014-10-03 | 2 | 49d |  |
| 6 |  | 1.4 Write preliminary project proposals (2 proposals/team member) | 2d | 2014-10-02 | 2014-10-03 | 3 | 33d |  |
| 7 |  | 1.5 Make decision matrix template | 1d | 2014-10-02 | 2014-10-02 | 3 | 50d |  |
| 8 |  | 1.6 Review all preliminary project proposals | 1d | 2014-10-06 | 2014-10-06 | 6 | 33d |  |
| 9 |  | 1.7 Enter proposals scores / Select Project | 1d | 2014-10-07 | 2014-10-07 | 8 | 33d |  |
| 10 |  | Team Formed and Project Selected | 0d | 2014-10-08 | 2014-10-08 |  | 47d | start no earlier than 2014-10-08 |
| 11 |  | Submit Decision Matrix to Instructor | 0d | 2014-10-13 | 2014-10-13 |  | 44d | start no earlier than 2014-10-13 |
| 12 | 2 | **Create Product Design Specifications** | 13d | 2014-10-08 | 2014-10-27 |  | 33d |  |
| 13 |  | 2.1 Research microcontroller interfaces | 1d | 2014-10-08 | 2014-10-08 | 9 | 33d |  |
| 14 |  | 2.2 Research sensor options | 1d | 2014-10-09 | 2014-10-09 | 9 | 32d |  |
| 15 |  | 2.3 Research actuators (LEDs) options | 1d | 2014-10-09 | 2014-10-09 | 9 | 32d |  |
| 16 |  | 2.4 Research power options | 1d | 2014-10-09 | 2014-10-09 | 9 | 32d |  |
| 17 |  | 2.5 Research options for audio circuit | 1d | 2014-10-09 | 2014-10-09 | 9 | 32d |  |
| 18 |  | 2.6 Select system interfaces and make block diagram | 1d | 2014-10-10 | 2014-10-10 | 13, 14, 15, 16, 17 | 32d |  |
| 19 |  | 2.7 Write Product Design Specification document | 3d | 2014-10-17 | 2014-10-21 | 18 | 34d |  |
| 20 |  | 2.8 Review Product Design Specification document | 1d | 2014-10-21 | 2014-10-22 | 19 | 34d |  |
| 21 |  | 2.9 Revise Product Design Specification document | 2d | 2014-10-23 | 2014-10-24 | 20 | 34d |  |
| 22 |  | Submit PDS document to instructor | 0d | 2014-10-27 | 2014-10-27 |  | 34d | start no earlier than 2014-10-27 |
| 23 | 3 | **Create Schematic** | 13d | 2014-10-13 | 2014-10-29 |  | 31d |  |
| 24 |  | 3.1 Select main components | 1d | 2014-10-13 | 2014-10-13 | 18 | 32d |  |
| 25 |  | 3.2 Read MCU, sensor, LED controller and LED datasheets | 3d | 2014-10-14 | 2014-10-16 | 24 | 32d |  |
| 26 |  | 3.3 Make preliminary schematic | 5d | 2014-10-17 | 2014-10-23 | 24, 25 | 32d |  |
| 27 |  | 3.4 Review schematic | 1d | 2014-10-23 | 2014-10-24 | 26 | 32d |  |
| 28 |  | 3.5 Revise schematic (1) | 2d | 2014-10-27 | 2014-10-28 | 27 | 32d |  |
| 29 |  | Submit preliminary schematic to instructor (no ERC errors) | 0d | 2014-10-29 | 2014-10-29 |  | 27d | start no earlier than 2014-10-29 |
| 30 |  | 3.6 Revise schematic (2) | 1d | 2014-10-29 | 2014-10-29 | 29 | 27d |  |
| 31 | 4 | **Create Board Layout** | 7d | 2014-10-30 | 2014-11-10 |  | 7d |  |
| 32 |  | 4.1 Make preliminary layout | 3d | 2014-10-30 | 2014-11-03 | 30 | 27d |  |
| 33 |  | 4.2 Review and revise layout (1) | 1d | 2014-11-04 | 2014-11-04 | 32 | 27d |  |
| 34 |  | Submit preliminary layout (no DRC errors) | 0d | 2014-11-05 | 2014-11-05 |  | 25d | start no earlier than 2014-11-05 |
| 35 |  | 4.3 Revise layout (2) | 1d | 2014-11-05 | 2014-11-05 | 34 | 25d |  |
| 36 |  | 4.4 Find BOM parts on Digikey and order components | 1d | 2014-11-06 | 2014-11-06 | 35 | 25d |  |
| 37 |  | Receive Digi-key components | 0d | 2014-11-07 | 2014-11-07 |  | 24d | start no earlier than 2014-11-07 |
| 38 |  | 4.5 Print layout and overimpose real components / Review layout before submitting board to fab | 1d | 2014-11-07 | 2014-11-07 | 37 | 24d |  |
| 39 |  | Upload board design to OSHPark | 0d | 2014-11-10 | 2014-11-10 |  | 0d | start no earlier than 2014-11-10 |
| 40 | 5 | **Create Sensors and Actuators Drivers** | 15d | 2014-11-10 | 2014-11-28 |  | 0d |  |
| 41 |  | 5.1 Research AVRlibc and build development environment on breadboard | 1d | 2014-11-10 | 2014-11-10 | 39 | 0d |  |
| 42 |  | 5.2 Research LED driver protocol | 1d | 2014-11-12 | 2014-11-12 | 39 | 1d |  |
| 43 |  | 5.3 Research I2C protocol | 1d | 2014-11-11 | 2014-11-11 | 39 | 13d |  |
| 44 |  | 5.4 Write simple LED program and download to MCU | 1d | 2014-11-11 | 2014-11-11 | 41 | 0d |  |
| 45 |  | 5.5 Code MCU initialization | 1d | 2014-11-13 | 2014-11-13 | 44 | 0d |  |
| 46 |  | 5.6 Code LED driver protocol | 5d | 2014-11-14 | 2014-11-20 | 45, 42 | 0d |  |
| 47 |  | 5.7 Code sensor I2C driver | 5d | 2014-11-12 | 2014-11-18 | 43, 41 | 13d |  |
| 48 |  | 5.8 Code MCU data processing | 1d | 2014-11-21 | 2014-11-21 | 47, 46 | 11d |  |
| 49 |  | 5.9 Code LED test sequence | 1d | 2014-11-24 | 2014-11-24 | 46 | 0d |  |
| 50 |  | 5.10 Write test plan for LED driver code and data processing code | 1d | 2014-11-25 | 2014-11-25 | 49 | 0d |  |
| 51 |  | 5.11 Write test plan for sensor driver code and data processing code | 1d | 2014-11-24 | 2014-11-24 | 48 | 11d |  |
| 52 |  | 5.12 Test and debug LED driver code and data processing code | 2d | 2014-11-26 | 2014-11-27 | 50 | 0d |  |
| 53 |  | 5.13 Test and debug sensor driver code and data processing code | 2d | 2014-11-25 | 2014-11-26 | 51 | 11d |  |
| 54 |  | 5.14 Combine MCU init, sensor, LED and data processing code | 1d | 2014-11-28 | 2014-11-28 | 52 | 0d |  |
| 55 | 6 | **Assemble and Test board** | 5d | 2014-11-17 | 2014-11-21 |  | 11d |  |
| 56 |  | Receive boards from OSHPark | 0d | 2014-11-17 | 2014-11-17 |  | 11d | start no earlier than 2014-11-17 |
| 57 |  | 6.1 Assemble all components for each subsytem (soldering) | 3d | 2014-11-17 | 2014-11-19 | 56 | 14d |  |
| 58 |  | 6.2 Power subsystem: Test VCC at required points | 1d | 2014-11-20 | 2014-11-20 | 57 | 14d |  |
| 59 |  | 6.3 Connectors/Headers/Switches: ensure test points are active | 1d | 2014-11-21 | 2014-11-21 | 58 | 14d |  |
| 60 |  | 6.4 Crystal Xtal signal is verified at 8.192MHz | 1d | 2014-11-21 | 2014-11-21 | 58 | 14d |  |
| 61 | 7 | **Develop Firmware for Audio Circuit** | 8d | 2014-11-17 | 2014-11-26 |  | 11d |  |
| 62 |  | 7.1 Code "Hello world" program for audio test | 5d | 2014-11-17 | 2014-11-21 | 56 | 11d |  |
| 63 |  | 7.2 PWM audio: code function for each supported color | 1d | 2014-11-24 | 2014-11-24 | 62 | 11d |  |
| 64 |  | 7.3 PWM audio: code mainline for color sensor readings | 1d | 2014-11-25 | 2014-11-25 | 63 | 11d |  |
| 65 |  | 7.4 Peer review PWM code | 1d | 2014-11-26 | 2014-11-26 | 64 | 11d |  |
| 66 | 8 | **Perform System Integration, Test and Verification** | 5d | 2014-12-01 | 2014-12-05 |  | 0d |  |
| 67 |  | 8.1 Design test cases for all subsystems | 2d | 2014-12-01 | 2014-12-02 | 54 | 0d |  |
| 68 |  | 8.2 Implement test cases for all subsystems | 2d | 2014-12-03 | 2014-12-04 | 67 | 0d |  |
| 69 |  | 8.3 Buy / Build mirror frame and assemble product | 1d | 2014-12-05 | 2014-12-05 | 68 | 0d |  |
| 70 | 9 | **Update Project Documentation** | 4d | 2014-12-08 | 2014-12-12 |  | 0d |  |

| ID | Task | Duration | Start | Finish | Predecessors | Total float | Constraint |
| --- | --- | --- | --- | --- | --- | --- | --- |
| 71 | 9.1 Draw L-0 block diagram of full system and subcomponents and L1 block diagram of full system | 1d | 2014-12-08 | 2014-12-08 | 69 | 0d |  |
| 72 | 9.2 Redefine project requirements, update PDS | 1d | 2014-12-09 | 2014-12-09 | 71 | 0d |  |
| 73 | 9.3 Create project report | 2d | 2014-12-10 | 2014-12-11 | 72 | 0d |  |
| 74 | 9.4 Create Project Presentation | 2d | 2014-12-10 | 2014-12-11 | 72 | 0d |  |
| 75 | Project Demo | 0d | 2014-12-12 | 2014-12-12 |  | 0d | start no earlier than 2014-12-12 |

## Version 2 (saved 2014-11-10)

Note of the change: reviewed project schedule

Last finish stays 2014-12-12. Complete tasks 0 → 35.

Added:

| ID | Task | Duration | Start | Finish | Predecessors | Resources |
| --- | --- | --- | --- | --- | --- | --- |
| 48 | 5.8 Code sensor interrupt | 3d | 2014-11-19 | 2014-11-21 | 47 | Deborah |

Changed:

| ID | Task | Start | Finish | Duration | Complete | Total float | Predecessors | Other |
| --- | --- | --- | --- | --- | --- | --- | --- | --- |
| 1 | **Get Started and Select Project** | 2014-10-01 A | 2014-10-13 A | 8d → 9d | 0% → 100% | 33d → none |  |  |
| 2 | Project Begins | 2014-10-01 A | 2014-10-01 A |  | 0% → 100% | 33d → none |  |  |
| 3 | 1.1 Form team | 2014-10-01 A | 2014-10-01 A |  | 0% → 100% | 33d → none |  |  |
| 4 | 1.2 Create team Github repository and Wiki | 2014-10-02 A | 2014-10-02 → 2014-10-03 A (+1d) | 1d → 2d | 0% → 100% | 50d → none |  |  |
| 5 | 1.3 Explore diverse project ideas | 2014-10-01 A | 2014-10-03 → 2014-10-06 A (+3d) | 3d → 4d | 0% → 100% | 49d → none |  |  |
| 6 | 1.4 Write preliminary project proposals (2 proposals/team member) | 2014-10-02 A | 2014-10-03 → 2014-10-06 A (+3d) | 2d → 3d | 0% → 100% | 33d → none |  |  |
| 7 | 1.5 Make decision matrix template | 2014-10-02 → 2014-10-03 A (+1d) | 2014-10-02 → 2014-10-07 A (+5d) | 1d → 2d | 0% → 100% | 50d → none |  |  |
| 8 | 1.6 Review all preliminary project proposals | 2014-10-06 → 2014-10-07 A (+1d) | 2014-10-06 → 2014-10-08 A (+2d) | 1d → 2d | 0% → 100% | 33d → none | 6 → 6, 4 |  |
| 9 | 1.7 Enter proposals scores / Select Project | 2014-10-07 → 2014-10-09 A (+2d) | 2014-10-07 → 2014-10-13 A (+6d) | 1d → 2d | 0% → 100% | 33d → none | 8 → 8, 7 |  |
| 10 | Team Formed and Project Selected | 2014-10-08 A | 2014-10-08 A |  | 0% → 100% | 47d → none | none → 3 | constraint start no earlier than 2014-10-08 → must finish on 2014-10-08 |
| 11 | Submit Decision Matrix to Instructor | 2014-10-13 A | 2014-10-13 A |  | 0% → 100% | 44d → none | none → 9 | constraint start no earlier than 2014-10-13 → must finish on 2014-10-13 |
| 12 | **Create Product Design Specifications** | 2014-10-08 → 2014-10-13 A (+5d) | 2014-10-27 A | 13d → 10.5d | 0% → 100% | 33d → none |  |  |
| 13 | 2.1 Research microcontroller interfaces | 2014-10-08 → 2014-10-13 A (+5d) | 2014-10-08 → 2014-10-15 A (+7d) | 1d → 2d | 0% → 100% | 33d → none |  |  |
| 14 | 2.2 Research sensor options | 2014-10-09 → 2014-10-13 A (+4d) | 2014-10-09 → 2014-10-15 A (+6d) | 1d → 2d | 0% → 100% | 32d → none |  |  |
| 15 | 2.3 Research actuators (LEDs) options | 2014-10-09 → 2014-10-13 A (+4d) | 2014-10-09 → 2014-10-15 A (+6d) | 1d → 2d | 0% → 100% | 32d → none |  |  |
| 16 | 2.4 Research power options | 2014-10-09 → 2014-10-13 A (+4d) | 2014-10-09 → 2014-10-15 A (+6d) | 1d → 2d | 0% → 100% | 32d → none |  |  |
| 17 | 2.5 Research options for audio circuit | 2014-10-09 → 2014-10-13 A (+4d) | 2014-10-09 → 2014-10-15 A (+6d) | 1d → 2d | 0% → 100% | 32d → none |  |  |
| 18 | 2.6 Select system interfaces and make block diagram | 2014-10-10 → 2014-10-15 A (+5d) | 2014-10-10 → 2014-10-17 A (+7d) | 1d → 2d | 0% → 100% | 32d → none |  |  |
| 19 | 2.7 Write Product Design Specification document | 2014-10-17 A | 2014-10-21 A | 3d → 2d | 0% → 100% | 34d → none |  |  |
| 20 | 2.8 Review Product Design Specification document | 2014-10-21 A | 2014-10-22 → 2014-10-24 A (+2d) | 1d → 3d | 0% → 100% | 34d → none |  |  |
| 21 | 2.9 Revise Product Design Specification document | 2014-10-23 → 2014-10-24 A (+1d) | 2014-10-24 → 2014-10-27 A (+3d) | 2d → 1d | 0% → 100% | 34d → none |  |  |
| 22 | Submit PDS document to instructor | 2014-10-27 A | 2014-10-27 A |  | 0% → 100% | 34d → none | none → 21 | constraint start no earlier than 2014-10-27 → must finish on 2014-10-27 |
| 23 | **Create Schematic** | 2014-10-13 → 2014-10-17 A (+4d) | 2014-10-29 → 2014-10-30 A (+1d) | 13d → 9.5d | 0% → 100% | 31d → none |  |  |
| 24 | 3.1 Select main components | 2014-10-13 → 2014-10-17 A (+4d) | 2014-10-13 → 2014-10-20 A (+7d) |  | 0% → 100% | 32d → none |  |  |
| 25 | 3.2 Read MCU, sensor, LED controller and LED datasheets | 2014-10-14 → 2014-10-20 A (+6d) | 2014-10-16 → 2014-10-23 A (+7d) |  | 0% → 100% | 32d → none |  |  |
| 26 | 3.3 Make preliminary schematic | 2014-10-17 → 2014-10-23 A (+6d) | 2014-10-23 → 2014-10-27 A (+4d) | 5d → 2d | 0% → 100% | 32d → none |  |  |
| 27 | 3.4 Review schematic | 2014-10-23 → 2014-10-27 A (+4d) | 2014-10-24 → 2014-10-28 A (+4d) |  | 0% → 100% | 32d → none |  |  |
| 28 | 3.5 Revise schematic (1) | 2014-10-27 → 2014-10-28 A (+1d) | 2014-10-28 → 2014-10-29 A (+1d) | 2d → 1d | 0% → 100% | 32d → none |  |  |
| 29 | Submit preliminary schematic to instructor (no ERC errors) | 2014-10-29 A | 2014-10-29 A |  | 0% → 100% | 27d → none | none → 28 | constraint start no earlier than 2014-10-29 → must finish on 2014-10-29 |
| 30 | 3.6 Revise schematic (2) | 2014-10-29 → 2014-10-30 A (+1d) | 2014-10-29 → 2014-10-30 A (+1d) |  | 0% → 100% | 27d → none |  |  |
| 31 | **Create Board Layout** | 2014-10-30 → 2014-10-31 A (+1d) | 2014-11-10 A |  | 0% → 100% | 7d → none |  |  |
| 32 | 4.1 Make preliminary layout | 2014-10-30 → 2014-10-31 A (+1d) | 2014-11-03 → 2014-11-04 A (+1d) |  | 0% → 100% | 27d → none |  |  |
| 33 | 4.2 Review and revise layout (1) | 2014-11-04 → 2014-11-05 A (+1d) | 2014-11-04 → 2014-11-05 A (+1d) |  | 0% → 100% | 27d → none |  |  |
| 34 | Submit preliminary layout (no DRC errors) | 2014-11-05 A | 2014-11-05 A |  | 0% → 100% | 25d → none | none → 33 | constraint start no earlier than 2014-11-05 → must finish on 2014-11-05 |
| 35 | 4.3 Revise layout (2) | 2014-11-05 → 2014-11-06 A (+1d) | 2014-11-05 → 2014-11-10 A (+5d) | 1d → 3d | 0% → 100% | 25d → none |  |  |
| 36 | 4.4 Find BOM parts on Digikey and order components | 2014-11-06 → 2014-11-05 A (-1d) | 2014-11-06 → 2014-11-05 A (-1d) |  | 0% → 100% | 25d → none | 35 → 32 |  |
| 37 | Digi-key components shipping | 2014-11-07 → 2014-11-06 A (-1d) | 2014-11-07 → 2014-11-06 A (-1d) | 0d → 1d | 0% → 100% | 24d → none | none → 36 | was named Receive Digi-key components; constraint start no earlier than 2014-11-07 → must finish on 2014-11-07 |
| 38 | 4.5 Print layout and overimpose real components / Review layout before submitting board to fab | 2014-11-07 A | 2014-11-07 A |  | 0% → 100% | 24d → none |  |  |
| 39 | Upload board design to OSHPark | 2014-11-10 A | 2014-11-10 A |  | 0% → 100% | 0d → none | none → 30, 35, 38 | constraint start no earlier than 2014-11-10 → must finish on 2014-11-10 |
| 40 | **Create Sensors and Actuators Drivers** | 2014-11-10 → 2014-11-11 (+1d) |  | 15d → 14d |  | 0d → 1d |  |  |
| 41 | 5.1 Research AVRlibc and build development environment on breadboard | 2014-11-10 → 2014-11-11 (+1d) | 2014-11-10 → 2014-11-11 (+1d) |  |  | 0d → 2d |  |  |
| 42 | 5.2 Research LED driver protocol | 2014-11-12 → 2014-11-13 (+1d) | 2014-11-12 → 2014-11-13 (+1d) |  |  | 1d → 3d |  |  |
| 43 | 5.3 Research I2C protocol | 2014-11-11 → 2014-11-12 (+1d) | 2014-11-11 → 2014-11-12 (+1d) |  |  | 13d → 1d |  |  |
| 44 | 5.4 Write simple LED program and download to MCU | 2014-11-11 → 2014-11-12 (+1d) | 2014-11-11 → 2014-11-12 (+1d) |  |  | 0d → 2d |  |  |
| 45 | 5.5 Code MCU initialization | 2014-11-13 → 2014-11-14 (+1d) | 2014-11-13 → 2014-11-14 (+1d) |  |  | 0d → 2d |  |  |
| 46 | 5.6 Code LED driver protocol | 2014-11-14 → 2014-11-17 (+3d) |  | 5d → 4d |  | 0d → 2d |  |  |
| 47 | 5.7 Code sensor I2C driver | 2014-11-12 → 2014-11-13 (+1d) |  | 5d → 4d |  | 13d → 1d |  |  |
| 49 | 5.9 Code MCU data processing | 2014-11-21 → 2014-11-24 (+3d) | 2014-11-21 → 2014-11-24 (+3d) |  |  | 11d → 1d | 47, 46 → 46, 48 | was named 5.8 Code MCU data processing |
| 50 | 5.10 Code LED test sequence | 2014-11-24 → 2014-11-21 (-3d) | 2014-11-24 → 2014-11-21 (-3d) |  |  | 0d → 2d |  | was named 5.9 Code LED test sequence |
| 51 | 5.11 Write test plan for LED driver code and data processing code |  |  |  |  | 0d → 1d | 50 → 50, 49 | was named 5.10 Write test plan for LED driver code and data processing code |
| 52 | 5.12 Write test plan for sensor driver code and data processing code | 2014-11-24 → 2014-11-25 (+1d) | 2014-11-24 → 2014-11-25 (+1d) |  |  | 11d → 1d |  | was named 5.11 Write test plan for sensor driver code and data processing code |
| 53 | 5.13 Test and debug LED driver code and data processing code |  |  |  |  | 0d → 1d |  | was named 5.12 Test and debug LED driver code and data processing code |
| 54 | 5.14 Test and debug sensor driver code and data processing code | 2014-11-25 → 2014-11-26 (+1d) | 2014-11-26 → 2014-11-27 (+1d) |  |  | 11d → 1d |  | was named 5.13 Test and debug sensor driver code and data processing code |
| 55 | 5.15 Combine MCU init, sensor, LED and data processing code |  |  |  |  | 0d → 1d | 53 → 53, 54 | was named 5.14 Combine MCU init, sensor, LED and data processing code |
| 56 | **Assemble and Test board** |  |  | 5d → 4d |  | 11d → 0d |  |  |
| 57 | Receive boards from OSHPark |  |  |  |  | 11d → 0d | none → 39 | constraint start no earlier than 2014-11-17 → must finish on 2014-11-17 |
| 58 | 6.1 Assemble all components for each subsytem (soldering) | 2014-11-17 → 2014-11-18 (+1d) |  | 3d → 2d |  | 14d → 0d |  |  |
| 62 | **Develop Firmware for Audio Circuit** | 2014-11-17 → 2014-11-24 (+7d) | 2014-11-26 → 2014-12-01 (+5d) | 8d → 6d |  | 11d → 0d |  |  |
| 63 | 7.1 Code "Hello world" program for audio test | 2014-11-17 → 2014-11-24 (+7d) | 2014-11-21 → 2014-11-26 (+5d) | 5d → 3d |  | 11d → 0d | 57 → 61 |  |
| 64 | 7.2 PWM audio: code function for each supported color | 2014-11-24 → 2014-11-27 (+3d) | 2014-11-24 → 2014-11-27 (+3d) |  |  | 11d → 0d |  |  |
| 65 | 7.3 PWM audio: code mainline for color sensor readings | 2014-11-25 → 2014-11-28 (+3d) | 2014-11-25 → 2014-11-28 (+3d) |  |  | 11d → 0d |  |  |
| 66 | 7.4 Peer review PWM code | 2014-11-26 → 2014-12-01 (+5d) | 2014-11-26 → 2014-12-01 (+5d) |  |  | 11d → 0d |  |  |
| 67 | **Perform System Integration, Test and Verification** | 2014-12-01 → 2014-12-02 (+1d) | 2014-12-05 → 2014-12-09 (+4d) | 5d → 6d |  |  |  |  |
| 68 | 8.1 Design test cases for all subsystems | 2014-12-01 → 2014-12-02 (+1d) | 2014-12-02 → 2014-12-03 (+1d) |  |  |  | 55 → 66, 61, 60, 55 |  |
| 69 | 8.2 Implement test cases for all subsystems | 2014-12-03 → 2014-12-04 (+1d) | 2014-12-04 → 2014-12-05 (+1d) |  |  |  |  |  |
| 70 | 8.3 Buy / Build mirror frame and assemble product | 2014-12-05 → 2014-12-08 (+3d) | 2014-12-05 → 2014-12-09 (+4d) | 1d → 2d |  |  |  |  |
| 71 | **Update Project Documentation** | 2014-12-08 → 2014-12-10 (+2d) |  | 4d → 3d |  |  |  |  |
| 72 | 9.1 Draw L-0 block diagram of full system and subcomponents and L1 block diagram of full system | 2014-12-08 → 2014-12-10 (+2d) | 2014-12-08 → 2014-12-12 (+4d) | 1d → 3d |  |  |  |  |
| 73 | 9.2 Redefine project requirements, update PDS | 2014-12-09 → 2014-12-10 (+1d) | 2014-12-09 → 2014-12-12 (+3d) | 1d → 3d |  |  | 72 → 70, 72 |  |
| 74 | 9.3 Create project report |  | 2014-12-11 → 2014-12-12 (+1d) | 2d → 3d |  |  | 73 → 70, 73 |  |

| ID | Task | Finish | Duration | Predecessors | Other |
| --- | --- | --- | --- | --- | --- |
| 75 | 9.4 Create Project Presentation | 2014-12-11 → 2014-12-12 (+1d) | 2d → 3d | 73 → 70, 73 |  |
| 76 | Project Demo |  |  | none → 70, 74, 75, 69 | constraint start no earlier than 2014-12-12 → must finish on 2014-12-12 |
